# EX5

Schedule from MS Project, 2017-05-12 to 2017-09-27, A marks actual dates.

## Calendars

- Standard: Mon-Fri 08:00-12:00, 13:00-17:00; Sat-Sun off.

## Resources

| Resource |
| --- |
| John Tierney |
| Rebecca Burns |
| Bernie Frazer |
| George Brody |
| David Crawford |
| Joan |
| Higgins |
| Mike Goren |
| Juile Pawlkowski |
| Joan Higgins |
| Ted Haley |
| Mary Rernington |
| Mary Remington |

## Schedule

| ID | WBS | Task | Type | Duration | Start | Finish | Predecessors | Complete | Remaining | Total slack | Free slack | Resources | Work | Actual work |
| --- | --- | --- | --- | --- | --- | --- | --- | --- | --- | --- | --- | --- | --- | --- |
| 1 | 1 | **Software System Implementation** |  | 98.88d | 2017-05-12 A | 2017-09-27 |  | 26% | 73.5d |  |  |  | 2795.61h | 576h |
| 2 | 1.1 | **Build Project Plan** |  | 35d | 2017-05-12 A | 2017-06-29 |  | 94% | 2.19d |  |  |  | 616h | 576h |
| 3 | 1.1.1 | Create Statement Of Work |  | 12d | 2017-05-12 A | 2017-05-29 A |  | 100% |  |  |  | John Tierney [69%]; Rebecca Burns [90%]; Bernie Frazer [49%] | 199.68h | 199.68h |
| 4 | 1.1.2 | Obtain approval of Statement of Work |  | 6d | 2017-06-03 A | 2017-06-09 A | 3 | 100% |  |  |  | John Tierney; Rebecca Burns; Bernie Frazer [12%] | 101.76h | 101.76h |
| 5 | 1.1.3 | Create Project Plan |  | 12d | 2017-06-12 A | 2017-06-27 A | 4 | 100% |  |  |  | John Tierney [93%]; Rebecca Burns [93%]; Bernie Frazer | 274.56h | 274.56h |
| 6 | 1.1.4 | Review project plan with team |  | 2d | 2017-06-28 | 2017-06-29 | 5 |  |  | 63.88d | 0d | John Tierney [50%]; Rebecca Burns; Bernie Frazer | 40h |  |
| 7 | 1.1.5 | Obtain approval of project plan | milestone | 0d | 2017-06-29 | 2017-06-29 | 6 |  |  | 63.88d |  |  |  |  |
| 8 | 1.2 | **Finalize project plan and definition** |  | 33.75d | 2017-06-28 | 2017-08-14 |  |  |  |  |  |  | 1159.12h |  |
| 9 | 1.2.1 | Define system environment |  | 16d | 2017-06-28 | 2017-07-19 | 5 |  |  | 0d |  | George Brody [102%]; David Crawford; Mike Goren; Juile Pawlkowski; Joan Higgins | 642.56h |  |
| 10 | 1.2.2 | Determine current architechture |  | 6.25d | 2017-07-20 | 2017-07-28 | 9 |  |  | 0d |  | George Brody [80%]; David Crawford; Joan Higgins; Mike Goren; Juile Pawlkowski | 240h |  |
| 11 | 1.2.3 | Assess processes on the server |  | 5d | 2017-07-28 | 2017-08-04 | 10 |  |  | 0d |  | Bernie Frazer; Ted Haley; Juile Pawlkowski [83%]; Mike Goren [83%] | 146.4h |  |
| 12 | 1.2.4 | Assess printer hardware |  | 4d | 2017-08-04 | 2017-08-10 | 11 |  |  | 32.13d | 0d | Bernie Frazer [63%] | 20.16h |  |
| 13 | 1.2.5 | Communicate with integrator |  | 2.5d | 2017-08-10 | 2017-08-14 | 12 |  |  | 32.13d |  | Bernie Frazer; George Brody [50%]; Juile Pawlkowski; David Crawford; Ted Haley; Joan Higgins | 110h |  |
| 14 | 1.3 | **Complete architechture draft** |  | 22.5d | 2017-08-04 | 2017-09-05 |  |  |  |  |  |  | 641.1h |  |
| 15 | 1.3.1 | Conduct session |  | 6.25d | 2017-08-04 | 2017-08-14 | 11 |  |  | 0d |  | George Brody; David Crawford; Joan Higgins; Ted Haley; Juile Pawlkowski | 250h |  |
| 16 | 1.3.2 | Send out prep packet |  | 1.25d | 2017-08-14 | 2017-08-15 | 15 |  |  | 0d |  | George Brody [111%]; David Crawford; Joan Higgins | 31.1h |  |
| 17 | 1.3.3 | Conduct pre-interviews |  | 2.5d | 2017-08-15 | 2017-08-18 | 16 |  |  | 0d |  | George Brody; David Crawford; Joan Higgins | 60h |  |
| 18 | 1.3.4 | Conduct session |  | 6.25d | 2017-08-18 | 2017-08-28 | 17 |  |  | 16.13d | 0d | George Brody; David Crawford; Joan Higgins | 150h |  |
| 19 | 1.3.5 | Prepare draft document |  | 6.25d | 2017-08-28 | 2017-09-05 | 18 |  |  | 16.13d |  | George Brody; David Crawford; Joan Higgins | 150h |  |
| 20 | 1.4 | **Send out draft and review with key sponsor** |  | 28.63d | 2017-08-18 | 2017-09-27 |  |  |  |  |  |  | 379.39h |  |
| 21 | 1.4.1 | Determine additional requirements |  | 4d | 2017-08-18 | 2017-08-24 | 17 |  |  | 0d |  | John Tierney [94%]; David Crawford [94%]; Joan Higgins [94%]; Rebecca Burns [94%]; George Brody [94%] | 150.4h |  |
| 22 | 1.4.2 | Finalize additional session scope |  | 0.75d | 2017-08-24 | 2017-08-24 | 21 |  |  | 0d |  | John Tierney; David Crawford; Joan Higgins; George Brody [83%] | 22.98h |  |
| 23 | 1.4.3 | Communicate sessions to necessary attendance |  | 2.5d | 2017-08-25 | 2017-08-29 | 22 |  |  | 0d |  | Rebecca Burns; David Crawford | 40h |  |
| 24 | 1.4.4 | Conduct requirements sessions |  | 10d | 2017-08-29 | 2017-09-12 | 23 |  |  | 0d |  | Mary Remington | 80h |  |
| 25 | 1.4.5 | Document system requirements |  | 5d | 2017-09-12 | 2017-09-19 | 24 |  |  | 0d |  | Mary Remington | 40h |  |
| 26 | 1.4.6 | Circulate initial requirements draft |  | 1.38d | 2017-09-19 | 2017-09-20 | 25 |  |  | 0d |  | George Brody [45%]; Joan Higgins | 16.01h |  |
| 27 | 1.4.7 | Document minutes from sessions |  | 3.75d | 2017-09-20 | 2017-09-26 | 26 |  |  | 0d |  |  |  |  |
| 28 | 1.4.8 | Prepare final draft |  | 1.25d | 2017-09-26 | 2017-09-27 | 27 |  |  | 0d |  | David Crawford; Joan Higgins; George Brody | 30h |  |
